# Football Pitches Booking

How a schedule from MS Project changed from version to version. A marks actual dates.

## Version 1 (saved 2014-01-11)

| ID | WBS | Task | Duration | Start | Finish | Predecessors | Total float | Constraint |
| --- | --- | --- | --- | --- | --- | --- | --- | --- |
| 1 | 1 | **Preparing** | 3d | 2014-01-06 | 2014-01-08 |  | 68d |  |
| 2 |  | Analyze user's requirement | 1.5d | 2014-01-06 | 2014-01-07 |  | 8d | start no earlier than 2014-01-06 |
| 3 |  | Review technology | 1.5d | 2014-01-07 | 2014-01-08 |  | 6.5d | start no earlier than 2014-01-07 |
| 4 | 2 | **Project Introduction** | 3d | 2014-01-09 | 2014-01-13 |  | 65d |  |
| 5 |  | Research old traditional method and old system | 0.5d | 2014-01-09 | 2014-01-09 |  | 6d | start no earlier than 2014-01-09 |
| 6 |  | Prepare Project Introduction document | 1d | 2014-01-09 | 2014-01-10 |  | 4.5d | start no earlier than 2014-01-09 |
| 7 |  | Review Project Introduction document | 0.5d | 2014-01-10 | 2014-01-10 | 6 | 4.5d | start no earlier than 2014-01-10 |
| 8 |  | Submit Report 1 | 0d | 2014-01-13 | 2014-01-13 |  | 3.5d | start no earlier than 2014-01-13 |
| 9 | 3 | **Project Management Plan** | 7d | 2014-01-11 | 2014-01-20 |  | 29.5d |  |
| 10 |  | Create task list | 1d | 2014-01-11 | 2014-01-11 |  | 1.5d | start no earlier than 2014-01-11 |
| 11 |  | Assign task and scheduling | 1.5d | 2014-01-13 | 2014-01-14 | 10 | 1.5d |  |
| 12 |  | Prepare Coding Convention document | 1d | 2014-01-11 | 2014-01-11 |  | 6d | start no earlier than 2014-01-11 |
| 13 |  | Create Report 2 | 0.5d | 2014-01-14 | 2014-01-14 | 11, 12 | 25.5d | start no earlier than 2014-01-14 |
| 14 |  | Submit Report 2 | 0d | 2014-01-20 | 2014-01-20 |  | 1d | start no earlier than 2014-01-20 |
| 15 | 4 | **System Requirement Specification** | 27d | 2014-01-15 | 2014-02-15 | 13 | 29.5d |  |
| 16 |  | User Requirement Specification | 1d | 2014-01-15 | 2014-01-15 |  | 0.5d | start no earlier than 2014-01-15 |
| 17 | 4.2 | **System Requirement Specification** | 4d | 2014-01-16 | 2014-01-20 | 16 | 29.5d |  |
| 18 |  | Identify Functional Requirement | 1d | 2014-01-16 | 2014-01-16 |  | 29.5d |  |
| 19 |  | Create Use Case Diagram | 1d | 2014-01-17 | 2014-01-17 | 18 | 29.5d |  |
| 20 |  | Identify Non-Functional Requirement | 1d | 2014-01-17 | 2014-01-17 |  | 0.5d | start no earlier than 2014-01-17 |
| 21 |  | Create the System Requirement Specification | 2d | 2014-01-18 | 2014-01-20 | 19, 20 | 29.5d | start no earlier than 2014-01-18 |
| 22 |  | Create Entity Relationship Diagram | 1d | 2014-01-18 | 2014-01-18 | 19 | 30.5d | start no earlier than 2014-01-18 |
| 23 | 4.4 | **Review** | 3d | 2014-01-20 | 2014-01-22 |  | 28.5d |  |
| 24 |  | User Requirement Specification | 0.5d | 2014-01-20 | 2014-01-20 | 16 | 31d | start no earlier than 2014-01-20 |
| 25 |  | System Requirement Specification | 1d | 2014-01-21 | 2014-01-21 | 17 | 29.5d | start no earlier than 2014-01-20 |
| 26 |  | Entity Relationship Diagram | 1d | 2014-01-22 | 2014-01-22 | 22 | 28.5d | start no earlier than 2014-01-22 |
| 27 |  | Create Report 3 | 0.5d | 2014-01-23 | 2014-01-23 | 23 | 24.5d | start no earlier than 2014-01-21 |
| 28 |  | Submit Report 3 | 0d | 2014-02-15 | 2014-02-15 |  | 0.5d | start no earlier than 2014-02-15 |
| 29 | 5 | **System Design Description** | 29d | 2014-01-24 | 2014-02-27 | 27 | 26d |  |
| 30 |  | Design Overview | 0.5d | 2014-01-24 | 2014-01-24 |  | 18.5d | start no earlier than 2014-01-24 |
| 31 |  | System Architectural Design | 0.5d | 2014-01-24 | 2014-01-24 |  | 18.5d | start no earlier than 2014-01-24 |
| 32 |  | Component Diagram | 1d | 2014-01-25 | 2014-01-25 |  | 13d | start no earlier than 2014-01-25 |
| 33 |  | Detailed Description of Components | 3d | 2014-02-08 | 2014-02-11 | 32 | 38d | start no earlier than 2014-02-08 |
| 34 |  | Sequence Diagram | 3d | 2014-02-08 | 2014-02-11 |  | 2d | start no earlier than 2014-02-08 |
| 35 |  | Diagram Review | 1d | 2014-02-12 | 2014-02-12 | 33, 34 | 38d | start no earlier than 2014-01-24 |
| 36 |  | User Interface Design | 2.5d | 2014-02-13 | 2014-02-15 |  | 1.5d | start no earlier than 2014-02-13 |
| 37 |  | Database Design | 2d | 2014-02-13 | 2014-02-14 |  | 0.5d | start no earlier than 2014-02-13 |
| 38 |  | Create Report 4 | 1d | 2014-02-17 | 2014-02-17 |  | 8d | start no earlier than 2014-02-17 |
| 39 |  | Submit Report 4 | 0d | 2014-02-27 | 2014-02-27 |  | 25d | start no earlier than 2014-02-27 |
| 40 | 6 | **System Implementation and Testing** | 34d | 2014-02-18 | 2014-03-29 | 38 | 0d |  |
| 41 | 6.1 | **Prepare** | 3d | 2014-02-18 | 2014-02-20 |  | 31d |  |
| 42 |  | Implement Database | 1d | 2014-02-18 | 2014-02-18 |  | 33d |  |
| 43 |  | Define Test Approach | 0.5d | 2014-02-18 | 2014-02-18 |  | 33.5d |  |
| 44 |  | Create Test Plan | 1d | 2014-02-19 | 2014-02-19 |  | 6d | start no earlier than 2014-02-19 |
| 45 |  | Create Test Cases | 2d | 2014-02-19 | 2014-02-20 |  | 5d | start no earlier than 2014-02-19 |
| 46 |  | Create Checklists | 1d | 2014-02-20 | 2014-02-20 |  | 5d | start no earlier than 2014-02-20 |
| 47 |  | Coding, Unit Testing and Self-review | 18d | 2014-02-21 | 2014-03-13 |  | 5d | start no earlier than 2014-02-21 |
| 48 |  | System Integration and System Testing | 6d | 2014-03-14 | 2014-03-20 | 47 | 5d |  |
| 49 |  | Create Report 5 | 2d | 2014-03-21 | 2014-03-22 | 48 | 5d |  |
| 50 |  | Submit Report 5 | 0d | 2014-03-29 | 2014-03-29 |  | 0d | start no earlier than 2014-03-29 |
| 51 | 7 | **System User's Manual** | 1.5d | 2014-03-24 | 2014-03-25 |  | 3.5d |  |
| 52 |  | Create Installation Guide | 1d | 2014-03-24 | 2014-03-24 |  | 4d | start no earlier than 2014-03-24 |
| 53 |  | Creaet User's Guide | 1d | 2014-03-24 | 2014-03-24 |  | 4d | start no earlier than 2014-03-24 |
| 54 |  | Create Report 6 | 0.5d | 2014-03-25 | 2014-03-25 | 52, 53 | 3.5d | start no earlier than 2014-03-25 |
| 55 |  | Submit Report 6 | 0d | 2014-03-24 | 2014-03-24 |  | 5d | start no earlier than 2014-03-24 |

## Version 2 (saved 2014-01-13)

Last finish 2014-03-29 → 2014-04-14 (+16d).

Changed:

| ID | Task | Start | Finish | Duration | Total float | Other |
| --- | --- | --- | --- | --- | --- | --- |
| 33 | Detailed Description of Components |  | 2014-02-11 → 2014-02-10 (-1d) | 3d → 1.5d | 38d → 39.5d | resources PhuongND; GiangNHH → PhuongND; GiangNHH; ThinhND; KhanhNQ |
| 34 | Sequence Diagram | 2014-02-08 → 2014-02-10 (+2d) | 2014-02-11 → 2014-02-12 (+1d) | 3d → 2.5d | 2d → 37d | constraint start no earlier than 2014-02-08 → start no earlier than 2014-02-10; resources ThinhND; KhanhNQ → ThinhND; KhanhNQ; PhuongND; GiangNHH |
| 35 | Diagram Review | 2014-02-12 → 2014-02-13 (+1d) | 2014-02-12 → 2014-02-13 (+1d) |  | 38d → 37d |  |
| 36 | User Interface Design | 2014-02-13 → 2014-02-14 (+1d) | 2014-02-15 → 2014-02-17 (+2d) |  | 1.5d → 34.5d | constraint start no earlier than 2014-02-13 → start no earlier than 2014-02-14 |
| 37 | Database Design | 2014-02-13 → 2014-02-14 (+1d) | 2014-02-14 → 2014-02-15 (+1d) |  | 0.5d → 35d | constraint start no earlier than 2014-02-13 → start no earlier than 2014-02-14 |
| 38 | Create Report 4 | 2014-02-17 → 2014-02-18 (+1d) | 2014-02-17 → 2014-02-18 (+1d) |  | 8d → 7d | constraint start no earlier than 2014-02-17 → start no earlier than 2014-02-18 |
| 40 | **System Implementation and Testing** | 2014-02-18 → 2014-02-19 (+1d) |  | 34d → 33d | 0d → 13d |  |
| 41 | **Prepare** | 2014-02-18 → 2014-02-19 (+1d) | 2014-02-20 → 2014-02-21 (+1d) |  | 31d → 43d |  |
| 42 | Implement Database | 2014-02-18 → 2014-02-19 (+1d) | 2014-02-18 → 2014-02-19 (+1d) |  | 33d → 32d |  |
| 43 | Define Test Approach | 2014-02-18 → 2014-02-19 (+1d) | 2014-02-18 → 2014-02-19 (+1d) |  | 33.5d → 32.5d | constraint none → start no earlier than 2014-02-19 |
| 44 | Create Test Plan | 2014-02-19 → 2014-02-20 (+1d) | 2014-02-19 → 2014-02-20 (+1d) |  | 6d → 31d | constraint start no earlier than 2014-02-19 → start no earlier than 2014-02-20 |
| 45 | Create Test Cases | 2014-02-19 → 2014-02-20 (+1d) | 2014-02-20 → 2014-02-21 (+1d) |  | 5d → 30d | constraint start no earlier than 2014-02-19 → start no earlier than 2014-02-20 |
| 46 | Create Checklists | 2014-02-20 → 2014-02-21 (+1d) | 2014-02-20 → 2014-02-21 (+1d) |  | 5d → 30d | constraint start no earlier than 2014-02-20 → start no earlier than 2014-02-21 |
| 47 | Coding, Unit Testing and Self-review | 2014-02-21 → 2014-02-22 (+1d) | 2014-03-13 → 2014-03-14 (+1d) |  | 5d → 4d | constraint start no earlier than 2014-02-21 → start no earlier than 2014-02-22 |
| 48 | System Integration and System Testing | 2014-03-14 → 2014-03-15 (+1d) | 2014-03-20 → 2014-03-21 (+1d) |  | 5d → 4d |  |
| 49 | Create Report 5 | 2014-03-21 → 2014-03-22 (+1d) |  | 2d → 1d |  | resources PhuongND → PhuongND; GiangNHH; ThinhND; KhanhNQ |
| 51 | **System User's Manual** |  | 2014-03-25 → 2014-04-14 (+20d) | 1.5d → 18d | 3.5d → 0d |  |
| 54 | Create Report 6 |  |  |  | 3.5d → 16.5d | constraint start no earlier than 2014-03-25 → start no earlier than 2014-03-24 |
| 55 | Submit Report 6 | 2014-03-24 → 2014-04-14 (+21d) | 2014-03-24 → 2014-04-14 (+21d) |  | 5d → 0d | constraint start no earlier than 2014-03-24 → start no earlier than 2014-04-14 |
